Schedule from MS Project, 2017-11-20 to 2018-02-14, A marks actual dates.
Microsoft

## Calendars

- 标准: Mon-Fri 08:00-12:00, 13:00-17:00; Sat-Sun off.

## Resources

| Resource |
| --- |
| 尚旭辉 |
| 王华维 |
| 唐良武 |
| 易子淇 |
| 胡小辉 |
| 胡小钧 |
| 郑鹏 |
| 张章 |
| 毛安成 |
| 郑鹏.唐良武 |
| 王沣 |
| 肖洪斌 |
| 胡嘉怡 |
| 陈亮 |
| 刘语 |
| 王华维尚旭辉 |
| 叶珍珍 |
| 刘露露 |
| 李信龙 |
| 黄建 |
| 肖鸿斌 |
| 刘宇 |
| 汪金平 |
| 陈进 |
| 刘明培 |

## Schedule

| ID | WBS | Task | Type | Duration | Start | Finish | Complete | Remaining | Actual finish | Total slack | Resources | Work | Actual work |
| --- | --- | --- | --- | --- | --- | --- | --- | --- | --- | --- | --- | --- | --- |
| 1 | 1 | **华为消费者BG项目1.5期** |  | 63d | 2017-11-20 09:00 A | 2018-02-14 18:00 | 80% | 12.58d |  |  |  | 2856h | 1908.8h |
| 2 | 1.1 | **1.需求阶段** |  | 25d | 2017-11-20 09:00 A | 2017-12-25 09:00 | 100% |  | 2017-12-19 09:00 |  |  | 280h | 280h |
| 3 | 1.1.1 | 1.1 需求讨论和收集 | manual | 5d | 2017-11-20 09:00 A | 2017-11-25 09:00 A | 100% |  |  |  | 胡嘉怡 | 40h | 40h |
| 4 | 1.1.2 | 1.2 需求文档编写 | manual | 10d | 2017-11-27 09:00 A | 2017-12-11 09:00 A | 100% |  |  |  | 胡嘉怡 | 80h | 80h |
| 5 | 1.1.3 | 1.3 需求评审 | manual | 10d | 2017-12-05 09:00 A | 2017-12-19 09:00 A | 100% |  |  |  | 陈亮; 刘宇 | 160h | 160h |
| 6 | 1.2 | **2.开发阶段** |  | 34.88d | 2017-11-27 09:00 A | 2018-01-12 18:00 | 88% | 4.09d |  | 0d |  | 1883.2h | 1516.8h |
| 7 | 1.2.1 | **2.1 电商IVR** |  | 30d | 2017-11-27 09:00 A | 2018-01-05 18:00 A | 100% |  |  |  |  | 584h | 584h |
| 8 | 1.2.1.1 | 2.1.3 增加电商IVR操作流水以及查询 | manual | 13d | 2017-12-20 09:00 A | 2018-01-05 18:00 A | 100% |  |  |  | 尚旭辉 | 104h | 104h |
| 9 | 1.2.1.2 | 2.1.1 按优先级播报故障、新品、常规引导语 | manual | 30d | 2017-11-27 09:00 A | 2018-01-05 18:00 A | 100% |  |  |  | 尚旭辉 | 240h | 240h |
| 10 | 1.2.1.3 | 2.1.2 工作时段与非工作时段的语音播报 | manual | 30d | 2017-11-27 09:00 A | 2018-01-05 18:00 A | 100% |  |  |  | 尚旭辉 | 240h | 240h |
| 11 | 1.2.2 | **2.2 坐席应用** |  | 18.88d | 2017-12-12 09:00 A | 2018-01-05 18:00 | 81% | 3.64d |  | 0d |  | 1059.2h | 739.2h |
| 12 | 1.2.2.1 | 2.2.1 选成员的组件支持导入和批量录入 | manual | 2d | 2017-12-12 09:00 A | 2017-12-14 09:00 A | 100% |  |  |  | 郑鹏; 唐良武 | 32h | 32h |
| 13 | 1.2.2.2 | 2.2.2 培训课程导入 | manual | 3d | 2017-12-18 09:00 A | 2017-12-21 09:00 A | 100% |  |  |  | 郑鹏.唐良武 | 24h | 24h |
| 14 | 1.2.2.3 | 2.3.3 特殊号码管理 | manual | 2d | 2017-12-21 09:00 A | 2017-12-25 09:00 A | 100% |  |  |  | 郑鹏; 唐良武 | 32h | 32h |
| 15 | 1.2.2.4 | 2.3.4 特殊号码路由控制接口 | manual | 1d | 2017-12-26 09:00 A | 2017-12-26 18:00 A | 100% |  |  |  | 王华维 | 8h | 8h |
| 16 | 1.2.2.5 | 2.3.5 黑名单增加按接入码等逻辑控制 | manual | 1d | 2017-12-26 09:00 A | 2017-12-27 09:00 A | 100% |  |  |  | 郑鹏; 唐良武; 张章 | 16h | 16h |
| 17 | 1.2.2.6 | 2.3.6 黑名单审批菜单功能 | manual | 1d | 2017-12-27 09:00 A | 2017-12-28 09:00 A | 100% |  |  |  | 郑鹏; 唐良武; 张章 | 16h | 16h |
| 18 | 1.2.2.7 | 2.3.7 重复来电查询界面优化（点击“重复次数”后弹出的明细界面优化） | manual | 3d | 2017-12-12 09:00 A | 2017-12-15 09:00 A | 100% |  |  |  | 易子淇; 张章 | 24h | 24h |
| 19 | 1.2.2.8 | 2.3.8 业务类型管理 | manual | 1d | 2017-12-18 09:00 A | 2017-12-19 09:00 A | 100% |  |  |  | 易子淇 | 8h | 8h |
| 20 | 1.2.2.9 | 2.3.9 技能队列按比例分配话务量设置 | manual | 1d | 2017-12-18 09:00 A | 2017-12-19 09:00 A | 100% |  |  |  | 胡小辉; 王华维 | 16h | 16h |
| 21 | 1.2.2.10 | 2.3.10 告警规则管理 | manual | 1d | 2017-12-15 09:00 A | 2017-12-18 09:00 A | 100% |  |  |  | 易子淇; 张章 | 9.6h | 9.6h |
| 22 | 1.2.2.11 | 2.3.11 告警方式管理 | manual | 2d | 2017-12-15 09:00 A | 2017-12-16 18:00 A | 100% |  |  |  | 唐良武; 张章 | 25.6h | 25.6h |
| 23 | 1.2.2.12 | 2.3.12 客户IVR默认语言查询和设置 | manual | 1d | 2017-12-19 09:00 A | 2017-12-20 09:00 A | 100% |  |  |  | 胡小辉; 王华维 | 16h | 16h |
| 24 | 1.2.2.13 | 2.3.13 短信满意度调研（1.5期逻辑） | manual | 1d | 2017-12-19 09:00 A | 2017-12-20 09:00 A | 100% |  |  |  | 胡小辉; 王华维 | 16h | 16h |

Notes:
- 8: 在上海现场支持0.8期上线，任务延迟

| ID | WBS | Task | Type | Duration | Start | Finish | Complete | Remaining | Actual start | Actual finish | Resources | Work | Actual work |
| --- | --- | --- | --- | --- | --- | --- | --- | --- | --- | --- | --- | --- | --- |
| 25 | 1.2.2.14 | **2.4 系统公告** |  | 2d | 2017-12-12 09:00 A | 2017-12-14 09:00 A | 100% |  |  |  |  | 16h | 16h |
| 26 | 1.2.2.14.1 | 2.4.1 公告增加有效期逻辑控制 | manual | 1d | 2017-12-12 09:00 A | 2017-12-13 09:00 A | 100% |  |  |  | 张章; 易子淇 | 8h | 8h |
| 27 | 1.2.2.14.2 | 2.4.2 非常重要公告倒计时提醒 | manual | 1d | 2017-12-13 09:00 A | 2017-12-14 09:00 A | 100% |  |  |  | 张章; 易子淇 | 8h | 8h |
| 28 | 1.2.2.15 | **2.5 话务条** |  | 16d | 2017-12-15 09:00 | 2018-01-05 18:00 | 29% | 11.29d | 2017-12-20 09:00 |  |  | 384h | 96h |
| 29 | 1.2.2.15.1 | 2.5.1 就绪（整理态时可示忙） | manual | 1d | 2017-12-20 09:00 A | 2017-12-21 09:00 A | 100% |  |  |  | 胡小辉; 王沣; 王华维 | 24h | 24h |
| 30 | 1.2.2.15.2 | **2.5.2 挂机** |  | 16d | 2017-12-15 09:00 | 2018-01-05 18:00 | 14% | 13.71d | 2017-12-21 09:00 |  |  | 328h | 40h |
| 31 | 1.2.2.15.2.1 | 2.5.2.1正常挂机和异常挂机按钮拆分 | manual | 1d | 2017-12-21 09:00 A | 2017-12-22 09:00 A | 100% |  |  |  | 胡小辉; 王华维 | 16h | 16h |
| 32 | 1.2.2.15.2.2 | 2.5.2.2 IVR满意度和短信满意度切换配置功能 | manual | 1d | 2017-12-21 09:00 A | 2017-12-22 09:00 A | 100% |  |  |  | 胡小辉; 尚旭辉; 王华维 | 24h | 24h |
| 33 | 1.2.2.15.2.3 | 2.5.2.3 短信满意度评价 | manual | 12d | 2017-12-21 09:00 | 2018-01-05 18:00 |  |  |  |  | 胡小辉; 尚旭辉; 王华维 | 288h |  |
| 34 | 1.2.2.15.3 | 2.5.3 复杂策略的示忙配置和控制 | manual | 2d | 2017-12-22 09:00 A | 2017-12-23 18:00 A | 100% |  |  |  | 胡小辉; 王华维 | 32h | 32h |
| 35 | 1.2.2.16 | **2.6 呼入弹屏** |  | 5d | 2017-12-22 09:00 | 2017-12-28 18:00 | 33% | 3.33d | 2017-12-23 09:00 |  |  | 56h | 24h |
| 36 | 1.2.2.16.1 | 2.6.1 增加待回访任务Tab页 | manual | 1d | 2017-12-23 09:00 A | 2017-12-25 09:00 A | 100% |  |  |  | 胡小辉; 王华维 | 16h | 16h |
| 37 | 1.2.2.16.2 | 2.6.2 信息发送界面优化 | manual | 1d | 2017-12-28 09:00 A | 2017-12-28 18:00 A | 100% |  |  |  | 易子淇 | 8h | 8h |
| 38 | 1.2.2.16.3 | 2.6.3 用户信息显示（对接DMP获取用户信息） | manual | 4d | 2017-12-25 09:00 | 2017-12-28 18:00 |  |  |  |  | 胡小钧 | 32h |  |
| 39 | 1.2.2.17 | **2.7 信息推送** |  | 13d | 2017-12-14 09:00 A | 2018-01-02 09:00 | 100% |  |  | 2018-01-01 09:00 |  | 16h | 16h |
| 40 | 1.2.2.17.1 | 2.7.1 IVR功能自动触发发短信场景 | manual | 1d | 2017-12-29 09:00 A | 2018-01-01 09:00 A | 100% |  |  |  | 尚旭辉 | 8h | 8h |
| 41 | 1.2.2.17.2 | 2.7.2 手工短信发送功能改造 | manual | 1d | 2017-12-14 09:00 A | 2017-12-15 09:00 A | 100% |  |  |  | 易子淇 | 8h | 8h |
| 42 | 1.2.2.18 | **2.8 首页布局** |  | 7d | 2017-12-27 09:00 A | 2018-01-05 09:00 | 100% |  |  | 2018-01-02 09:00 |  | 112h | 112h |
| 43 | 1.2.2.18.1 | **2.8.1 外呼班长首页** |  | 4d | 2017-12-27 09:00 A | 2018-01-01 18:00 | 100% |  |  | 2017-12-28 09:00 |  | 64h | 64h |
| 44 | 1.2.2.18.1.1 | 2.8.1.1 未完成任务（待分配）组件 | manual | 1d | 2017-12-27 09:00 A | 2017-12-28 09:00 A | 100% |  |  |  | 郑鹏; 唐良武 | 16h | 16h |
| 45 | 1.2.2.18.1.2 | 2.8.1.2 未完成任务（已分配）组件 | manual | 1d | 2017-12-27 09:00 A | 2017-12-28 09:00 A | 100% |  |  |  | 郑鹏; 唐良武 | 16h | 16h |
| 46 | 1.2.2.18.1.3 | 2.8.1.3 已完成任务组件 | manual | 1d | 2017-12-27 09:00 A | 2017-12-28 09:00 A | 100% |  |  |  | 郑鹏; 唐良武 | 16h | 16h |
| 47 | 1.2.2.18.1.4 | 2.8.1.4 班组今日情况组件 | manual | 1d | 2017-12-27 09:00 A | 2017-12-28 09:00 A | 100% |  |  |  | 郑鹏; 唐良武 | 16h | 16h |
| 48 | 1.2.2.18.2 | **2.8.2 外呼坐席首页** |  | 4d | 2018-01-01 09:00 A | 2018-01-05 09:00 | 100% |  |  | 2018-01-02 09:00 |  | 48h | 48h |
| 49 | 1.2.2.18.2.1 | 2.8.2.1待完成回访任务组件 | manual | 1d | 2018-01-01 09:00 A | 2018-01-02 09:00 A | 100% |  |  |  | 郑鹏; 唐良武 | 16h | 16h |
| 50 | 1.2.2.18.2.2 | 2.8.2.2已完成任务组件 | manual | 1d | 2018-01-01 09:00 A | 2018-01-02 09:00 A | 100% |  |  |  | 郑鹏; 唐良武 | 16h | 16h |
| 51 | 1.2.2.18.2.3 | 2.8.2.3个人今日情况组件 | manual | 1d | 2018-01-01 09:00 A | 2018-01-02 09:00 A | 100% |  |  |  | 郑鹏; 唐良武 | 16h | 16h |

Notes:
- 33: 客户回复的满意度评价短信无法与通话流水做精确绑定，待确认
- 40: 在上海现场支持0.8期上线，任务延迟

| ID | WBS | Task | Type | Duration | Start | Finish | Predecessors | Complete | Actual start | Actual finish | Resources | Work | Actual work |
| --- | --- | --- | --- | --- | --- | --- | --- | --- | --- | --- | --- | --- | --- |
| 52 | 1.2.2.19 | **2.9 预约回电** |  | 8d | 2017-12-25 09:00 A | 2018-01-03 18:00 A |  | 100% |  |  |  | 152h | 152h |
| 53 | 1.2.2.19.1 | 2.9.1 预约回电外呼流程开发 | manual | 8d | 2017-12-25 09:00 A | 2018-01-03 18:00 A |  | 100% |  |  | 尚旭辉 | 64h | 64h |
| 54 | 1.2.2.19.2 | **2.9.2预约回电名单普通控制** |  | 1d | 2017-12-25 09:00 A | 2017-12-26 09:00 A |  | 100% |  |  |  | 8h | 8h |
| 55 | 1.2.2.19.2.1 | 2.9.1.1预约回电定时、手工启停功能 | manual | 1d | 2017-12-25 09:00 A | 2017-12-26 09:00 A |  | 100% |  |  | 肖鸿斌 | 8h | 8h |
| 56 | 1.2.2.19.3 | **2.9.1.2客户呼入后自动完成其外呼任务** |  | 1d | 2017-12-26 09:00 A | 2017-12-27 09:00 A |  | 100% |  |  |  | 16h | 16h |
| 57 | 1.2.2.19.3.1 | 2.9.1.3 三次回电失败取消任务 | manual | 1d | 2017-12-26 09:00 A | 2017-12-27 09:00 A |  | 100% |  |  | 刘明培 | 8h | 8h |
| 58 | 1.2.2.19.3.2 | 2.9.1.4短信通知客户预约回电情况 | manual | 1d | 2017-12-26 09:00 A | 2017-12-27 09:00 A |  | 100% |  |  | 刘明培 | 8h | 8h |
| 59 | 1.2.2.19.4 | 2.9.3 预约回电名单新增接口 | manual | 1d | 2017-12-28 09:00 A | 2017-12-29 09:00 A |  | 100% |  |  | 陈进 | 8h | 8h |
| 60 | 1.2.2.19.5 | 2.9.3 IVR扫描任务接口 | manual | 3d | 2017-12-29 09:00 A | 2018-01-02 18:00 A | 59 | 100% |  |  | 陈进 | 24h | 24h |
| 61 | 1.2.2.19.6 | 2.9.4 预约回电名单查询 | manual | 1d | 2017-12-28 09:00 A | 2017-12-29 09:00 A |  | 100% |  |  | 刘明培 | 8h | 8h |
| 62 | 1.2.2.19.7 | **2.9.5 预约回电弹屏** |  | 2d | 2017-12-27 09:00 A | 2017-12-29 09:00 A |  | 100% |  |  |  | 24h | 24h |
| 63 | 1.2.2.19.7.1 | 2.9.5.1 客户上次接入IVR操作轨迹展示 | manual | 1d | 2017-12-27 09:00 A | 2017-12-28 09:00 A |  | 100% |  |  | 易子淇 | 8h | 8h |
| 64 | 1.2.2.19.7.2 | 2.9.5.2 用户信息增加预约回电标识 | manual | 1d | 2017-12-28 09:00 A | 2017-12-29 09:00 A |  | 100% |  |  | 易子淇 | 8h | 8h |
| 65 | 1.2.2.19.7.3 | 2.9.5.3 预约回电任务状态登记 | manual | 1d | 2017-12-28 09:00 A | 2017-12-29 09:00 A |  | 100% |  |  | 易子淇 | 8h | 8h |
| 66 | 1.2.2.20 | **2.10 外呼管理** |  | 8d | 2017-12-20 09:00 | 2018-01-01 09:00 |  | 100% | 2017-12-18 09:00 | 2017-12-29 09:00 |  | 80h | 80h |
| 67 | 1.2.2.20.1 | 2.9.1问卷管理 | manual | 2d | 2017-12-18 09:00 A | 2017-12-20 09:00 A |  | 100% |  |  | 肖鸿斌 | 16h | 16h |
| 68 | 1.2.2.20.2 | 2.9.2外呼任务管理 | manual | 1d | 2017-12-20 09:00 A | 2017-12-21 09:00 A |  | 100% |  |  | 肖鸿斌 | 8h | 8h |
| 69 | 1.2.2.20.3 | 2.9.3外呼任务执行 | manual | 2d | 2017-12-22 09:00 A | 2017-12-26 09:00 A |  | 100% |  |  | 肖鸿斌 | 16h | 16h |
| 70 | 1.2.2.20.4 | 2.9.4外呼类型及结果维护 | manual | 2d | 2017-12-26 09:00 A | 2017-12-28 09:00 A |  | 100% |  |  | 肖鸿斌 | 16h | 16h |
| 71 | 1.2.2.20.5 | 2.9.5典型案例查询 | manual | 1d | 2017-12-28 09:00 A | 2017-12-29 09:00 A |  | 100% |  |  | 肖鸿斌 | 8h | 8h |
| 72 | 1.2.2.20.6 | 2.9.6外呼问卷查询 | manual | 1d | 2017-12-28 09:00 A | 2017-12-29 09:00 A |  | 100% |  |  | 肖鸿斌 | 8h | 8h |
| 73 | 1.2.2.20.7 | 2.9.7外呼任务查询 | manual | 1d | 2017-12-28 09:00 A | 2017-12-29 09:00 A |  | 100% |  |  | 肖鸿斌 | 8h | 8h |
| 74 | 1.2.3 | **2.11 监控** |  | 5d | 2018-01-01 09:00 A | 2018-01-05 18:00 A |  | 100% |  |  |  | 40h | 40h |
| 75 | 1.2.3.1 | 2.11.1坐席状态监控预警显示 | manual | 5d | 2018-01-01 09:00 A | 2018-01-05 18:00 A |  | 100% |  |  | 易子淇 | 40h | 40h |

Notes:
- 53: 在上海现场支持0.8期上线，任务延迟

| ID | WBS | Task | Type | Duration | Start | Finish | Complete | Remaining | Total slack | Resources | Work | Actual work |
| --- | --- | --- | --- | --- | --- | --- | --- | --- | --- | --- | --- | --- |
| 76 | 1.2.4 | **2.13 对接NICE** |  | 7d | 2017-12-27 09:00 A | 2018-01-05 09:00 | 17% | 5.8d |  |  | 56h | 9.6h |
| 77 | 1.2.4.1 | 2.13.1NICE对接客户信息推送 | manual | 3d | 2017-12-27 09:00 | 2018-01-01 09:00 |  |  |  | 胡小钧 | 24h |  |
| 78 | 1.2.4.2 | 2.13.2NICE对接短信内容 | manual | 4d | 2018-01-01 09:00 A | 2018-01-05 09:00 | 30% | 2.8d |  | 胡小钧 | 32h | 9.6h |
| 79 | 1.2.5 | **新增需求** |  | 11.88d | 2017-12-28 09:00 A | 2018-01-12 18:00 A | 100% |  |  |  | 144h | 144h |
| 80 | 1.2.5.1 | 坐席业务系统跟openeye的整合 | manual | 6d | 2018-01-03 09:00 A | 2018-01-10 18:00 A | 100% |  |  | 王华维 | 48h | 48h |
| 81 | 1.2.5.2 | 员工满意度解决率报表实际是明细记录查询，此可更名为员工满意度解决率明细表后保留；请新增满意度和解决率汇总数据报表 | manual | 2d | 2018-01-02 09:00 A | 2018-01-03 18:00 A | 100% |  |  | 毛安成 | 16h | 16h |
| 82 | 1.2.5.3 | 示忙原因需要可以进行切换，场景：员工想要选择“培训”进行示忙，但是点成“小休”，示忙按键已经变成“示闲”，此时无法在保持示忙的前提下进行示忙原因细项的切换 | manual | 2d | 2018-01-08 09:00 A | 2018-01-09 18:00 A | 100% |  |  | 王华维 | 16h | 16h |
| 83 | 1.2.5.4 | 员工选择“小休”原因进行示忙，话务条左侧的累计时间应当变成“小休时长”累计，员工选择“培训”原因进行示忙，话务条左侧的累计时间应当变成“培训时长”累计 | manual | 3d | 2018-01-10 09:00 A | 2018-01-12 18:00 A | 100% |  |  | 王华维 | 24h | 24h |
| 84 | 1.2.5.5 | “为确保……您的本次可能会被录音”这段提示语需要在客户按转人工后先自动触发，再让客户排队，提高坐席通话效率（待中国区IVR刷新时一并修改） | manual | 3d | 2018-01-08 09:00 A | 2018-01-10 18:00 A | 100% |  |  | 尚旭辉 | 24h | 24h |
| 85 | 1.2.5.6 | 所有涉及权限树的地方，需增加搜索功能 | manual | 2d | 2017-12-28 09:00 A | 2017-12-29 18:00 A | 100% |  |  | 唐良武 | 16h | 16h |
| 86 | 1.3 | **内部测试阶段** |  | 4.88d | 2018-01-03 09:00 A | 2018-01-09 18:00 | 28% | 3.52d | 0d |  | 144h | 40h |
| 87 | 1.3.1 | 测试环境准备 | manual | 1d | 2018-01-03 09:00 A | 2018-01-03 18:00 A | 100% |  |  | 刘露露; 汪金平 | 16h | 16h |
| 88 | 1.3.2 | 电商IVR | manual | 1d | 2018-01-04 09:00 | 2018-01-04 18:00 |  |  |  | 刘露露; 汪金平 | 16h |  |
| 89 | 1.3.3 | 呼叫管理 | manual | 1d | 2018-01-04 09:00 A | 2018-01-04 18:00 A | 100% |  |  | 刘露露; 汪金平 | 16h | 16h |
| 90 | 1.3.4 | 外呼系统 | manual | 1d | 2018-01-05 09:00 A | 2018-01-05 18:00 | 50% | 0.5d |  | 刘露露; 汪金平 | 16h | 8h |
| 91 | 1.3.5 | 系统管理和软电话、监控 | manual | 1d | 2018-01-05 09:00 | 2018-01-05 18:00 |  |  |  | 刘露露; 汪金平 | 16h |  |
| 92 | 1.3.6 | 话务条、呼入弹屏、满意度管理 | manual | 1d | 2018-01-08 09:00 | 2018-01-08 18:00 |  |  |  | 刘露露; 汪金平 | 16h |  |
| 93 | 1.3.7 | 预约回电 | manual | 1d | 2018-01-08 09:00 | 2018-01-08 18:00 |  |  |  | 刘露露; 汪金平 | 16h |  |
| 94 | 1.3.8 | 首页布局、信息推送 | manual | 1d | 2018-01-09 09:00 | 2018-01-09 18:00 |  |  |  | 刘露露; 汪金平 | 16h |  |
| 95 | 1.3.9 | bug回归 | manual | 1d | 2018-01-09 09:00 | 2018-01-09 18:00 |  |  |  | 刘露露; 汪金平 | 16h |  |
| 96 | 1.4 | **3. SIT阶段** |  | 9.88d | 2018-01-08 09:00 A | 2018-01-19 18:00 | 23% | 7.65d | 0d |  | 372.8h | 72h |
| 97 | 1.4.1 | 3.1 测试计划编写 | manual | 1d | 2018-01-08 09:00 A | 2018-01-08 18:00 A | 100% |  |  | 叶珍珍; 刘露露; 李信龙 | 24h | 24h |
| 98 | 1.4.2 | 3.2 测试用例编写 | manual | 2d | 2018-01-09 09:00 A | 2018-01-10 18:00 A | 100% |  |  | 叶珍珍; 刘露露; 李信龙 | 48h | 48h |
| 99 | 1.4.3 | **3.3 测试执行** |  | 8d | 2018-01-10 09:00 | 2018-01-19 18:00 |  |  |  | 叶珍珍; 刘露露; 李信龙 | 276.8h |  |
| 100 | 1.4.3.1 | **3.3.1 电商IVR测试** |  | 2d | 2018-01-10 09:00 | 2018-01-11 18:00 |  |  |  |  | 8h |  |
| 101 | 1.4.3.1.1 | 3.3.1.1 增加电商IVR操作流水以及查询 | manual | 0.3d | 2018-01-12 08:00 | 2018-01-12 10:24 |  |  |  | 刘露露 | 2.4h |  |
| 102 | 1.4.3.1.2 | 3.3.1.2 按优先级播报故障、新品、常规引导语 | manual | 0.4d | 2018-01-12 08:00 | 2018-01-12 11:12 |  |  |  | 刘露露 | 3.2h |  |
| 103 | 1.4.3.1.3 | 3.3.1.3 工作时段与非工作时段的语音播报 | manual | 0.3d | 2018-01-12 08:00 | 2018-01-12 10:24 |  |  |  | 刘露露 | 2.4h |  |

Notes:
- 80: 最初的排期不包含这个需求，此次追加
- 81: 最初的排期不包含这个需求，此次追加
- 82: 最初的排期不包含这个需求，此次追加
- 83: 最初的排期不包含这个需求，此次追加
- 84: 最初的排期不包含这个需求，此次追加
- 85: 最初的排期不包含这个需求，此次追加

| ID | WBS | Task | Type | Duration | Start | Finish | Resources | Work |
| --- | --- | --- | --- | --- | --- | --- | --- | --- |
| 104 | 1.4.3.2 | **3.3.2 话务条测试** |  | 1d | 2018-01-12 01:36 | 2018-01-12 09:36 |  | 6.4h |
| 105 | 1.4.3.2.1 | 3.3.2.1 就绪（整理态时可示忙） | milestone, manual | 0d | 2018-01-12 01:36 | 2018-01-12 00:00 | 汪金平 |  |
| 106 | 1.4.3.2.2 | **3.3.2.2 挂机** |  | 0.8d | 2018-01-12 08:00 | 2018-01-12 15:24 |  | 6.4h |
| 107 | 1.4.3.2.2.1 | **3.3.2.3正常挂机和异常挂机按钮拆分** |  | 0.2d | 2018-01-12 08:00 | 2018-01-12 09:36 | 汪金平 | 6.4h |
| 108 | 1.4.3.2.2.1.1 | 3.3.2.4 IVR满意度和短信满意度切换配置功能 | manual | 0.2d | 2018-01-12 08:00 | 2018-01-12 09:36 | 汪金平 | 1.6h |
| 109 | 1.4.3.2.2.1.2 | 3.3.2.5 短信满意度评价 | manual | 0.2d | 2018-01-12 08:00 | 2018-01-12 09:36 | 汪金平 | 1.6h |
| 110 | 1.4.3.2.2.1.3 | 3.3.2.6 复杂策略的示忙配置和控制 | manual | 0.2d | 2018-01-12 08:00 | 2018-01-12 09:36 | 汪金平 | 1.6h |
| 111 | 1.4.3.3 | **3.3.3 系统公告测试** |  | 1d | 2018-01-15 08:00 | 2018-01-15 17:00 |  | 4h |
| 112 | 1.4.3.3.1 | 3.3.3.1 公告增加有效期逻辑控制 | manual | 0.3d | 2018-01-15 08:00 | 2018-01-15 10:24 | 汪金平 | 2.4h |
| 113 | 1.4.3.3.2 | 3.3.3.2 非常重要公告倒计时提醒 | manual | 0.2d | 2018-01-15 08:00 | 2018-01-15 09:36 | 汪金平 | 1.6h |
| 114 | 1.4.3.4 | **3.3.4 呼叫管理测试** |  | 2d | 2018-01-16 08:00 | 2018-01-17 17:00 |  | 19.2h |
| 115 | 1.4.3.4.1 | 3.3.4.1 选成员的组件支持导入和批量录入 | manual | 0.2d | 2018-01-16 08:00 | 2018-01-16 09:36 | 汪金平 | 1.6h |
| 116 | 1.4.3.4.2 | 3.3.4.2 培训课程导入 | manual | 0.2d | 2018-01-16 08:00 | 2018-01-16 09:36 | 汪金平 | 1.6h |
| 117 | 1.4.3.4.3 | 3.3.4.3 特殊号码管理 | manual | 0.2d | 2018-01-16 08:00 | 2018-01-16 09:36 | 汪金平 | 1.6h |
| 118 | 1.4.3.4.4 | 3.3.4.4特殊号码路由控制接口 | manual | 0.2d | 2018-01-16 08:00 | 2018-01-16 09:36 | 汪金平 | 1.6h |
| 119 | 1.4.3.4.5 | 3.3.4.5 黑名单增加按接入码等逻辑控制 | manual | 0.2d | 2018-01-16 08:00 | 2018-01-16 09:36 | 汪金平 | 1.6h |
| 120 | 1.4.3.4.6 | 3.3.4.6 黑名单审批菜单功能 | manual | 0.2d | 2018-01-16 08:00 | 2018-01-16 09:36 | 汪金平 | 1.6h |
| 121 | 1.4.3.4.7 | 3.3.4.7 重复来电查询界面优化（点击“重复次数”后弹出的明细界面优化） | manual | 0.2d | 2018-01-17 08:00 | 2018-01-17 09:36 | 汪金平 | 1.6h |
| 122 | 1.4.3.4.8 | 3.3.4.8 业务类型管理 | manual | 0.2d | 2018-01-17 08:00 | 2018-01-17 09:36 | 汪金平 | 1.6h |
| 123 | 1.4.3.4.9 | 3.3.4.9 技能队列按比例分配话务量设置 | milestone, manual | 0d | 2018-01-17 08:00 | 2018-01-17 09:36 | 汪金平 |  |
| 124 | 1.4.3.4.10 | 3.3.4.10 告警规则管理 | manual | 0.2d | 2018-01-17 08:00 | 2018-01-17 09:36 | 汪金平 | 1.6h |
| 125 | 1.4.3.4.11 | 3.3.4.11 告警方式管理 | manual | 0.2d | 2018-01-17 08:00 | 2018-01-17 09:36 | 汪金平 | 1.6h |
| 126 | 1.4.3.4.12 | 3.3.4.12 客户IVR默认语言查询和设置 | manual | 0.2d | 2018-01-17 08:00 | 2018-01-17 09:36 | 汪金平 | 1.6h |
| 127 | 1.4.3.4.13 | 3.3.4.13 短信满意度调研（1.5期逻辑） | manual | 0.2d | 2018-01-17 08:00 | 2018-01-17 09:36 | 汪金平 | 1.6h |

| ID | WBS | Task | Type | Duration | Start | Finish | Resources | Work |
| --- | --- | --- | --- | --- | --- | --- | --- | --- |
| 128 | 1.4.3.5 | **3.3.5 呼入弹屏测试** |  | 0.5d | 2018-01-15 08:00 | 2018-01-15 12:00 |  | 4h |
| 129 | 1.4.3.5.1 | 3.3.5.1增加待回访任务Tab页 | manual | 0.2d | 2018-01-15 08:00 | 2018-01-15 09:36 | 刘露露 | 1.6h |
| 130 | 1.4.3.5.2 | 3.3.5.2 信息发送界面优化 | manual | 0.1d | 2018-01-15 08:00 | 2018-01-15 08:48 | 刘露露 | 0.8h |
| 131 | 1.4.3.5.3 | 3.3.5.3 用户信息显示（对接DMP获取用户信息） | manual | 0.2d | 2018-01-15 08:00 | 2018-01-15 09:36 | 刘露露 | 1.6h |
| 132 | 1.4.3.6 | **3.3.6 信息推送测试** |  | 0.5d | 2018-01-15 08:00 | 2018-01-15 12:00 |  | 4h |
| 133 | 1.4.3.6.1 | 3.3.6.1 IVR功能自动触发发短信场景 | manual | 0.3d | 2018-01-15 08:00 | 2018-01-15 10:24 | 汪金平 | 2.4h |
| 134 | 1.4.3.6.2 | 3.3.6.2 手工短信发送功能改造 | manual | 0.2d | 2018-01-15 08:00 | 2018-01-15 09:36 | 汪金平 | 1.6h |
| 135 | 1.4.3.7 | **3.3.7 外呼管理测试** |  | 1.5d | 2018-01-15 08:00 | 2018-01-16 12:00 |  | 11.2h |
| 136 | 1.4.3.7.1 | 3.3.7.1问卷管理 | manual | 0.2d | 2018-01-15 08:00 | 2018-01-15 09:36 | 刘露露 | 1.6h |
| 137 | 1.4.3.7.2 | 3.3.7.2外呼任务管理 | manual | 0.2d | 2018-01-15 08:00 | 2018-01-15 09:36 | 刘露露 | 1.6h |
| 138 | 1.4.3.7.3 | 3.3.7.3外呼任务执行 | manual | 0.2d | 2018-01-15 08:00 | 2018-01-15 09:36 | 刘露露 | 1.6h |
| 139 | 1.4.3.7.4 | 3.3.7.4外呼类型及结果维护 | manual | 0.2d | 2018-01-15 08:00 | 2018-01-15 09:36 | 刘露露 | 1.6h |
| 140 | 1.4.3.7.5 | 3.3.7.5典型案例查询 | manual | 0.2d | 2018-01-16 08:00 | 2018-01-16 09:36 | 刘露露 | 1.6h |
| 141 | 1.4.3.7.6 | 3.3.7.6外呼问卷查询 | manual | 0.2d | 2018-01-16 08:00 | 2018-01-16 09:36 | 刘露露 | 1.6h |
| 142 | 1.4.3.7.7 | 3.3.7.7外呼任务查询 | manual | 0.2d | 2018-01-16 08:00 | 2018-01-16 09:36 | 刘露露 | 1.6h |
| 143 | 1.4.3.8 | **3.3.8 首页布局测试** |  | 1d | 2018-01-17 08:00 | 2018-01-17 17:00 |  | 7.2h |
| 144 | 1.4.3.8.1 | **3.8.1 外呼班长首页** |  | 0.5d | 2018-01-17 08:00 | 2018-01-17 12:00 |  | 3.2h |
| 145 | 1.4.3.8.1.1 | 3.8.1.1 未完成任务（已分配）组件 | manual | 0.1d | 2018-01-17 08:00 | 2018-01-17 08:48 | 刘露露 | 0.8h |
| 146 | 1.4.3.8.1.2 | 3.8.1.2 未完成任务（已分配）组件 | manual | 0.1d | 2018-01-17 08:00 | 2018-01-17 08:48 | 刘露露 | 0.8h |
| 147 | 1.4.3.8.1.3 | 3.8.1.3 已完成任务组件 | manual | 0.1d | 2018-01-17 08:00 | 2018-01-17 08:48 | 刘露露 | 0.8h |
| 148 | 1.4.3.8.1.4 | 3.8.1.4 班组今日情况组件 | manual | 0.1d | 2018-01-17 08:00 | 2018-01-17 08:48 | 刘露露 | 0.8h |
| 149 | 1.4.3.8.2 | **3.8.2 外呼坐席首页** |  | 0.5d | 2018-01-17 08:00 | 2018-01-17 12:00 |  | 4h |
| 150 | 1.4.3.8.2.1 | 3.8.2.1待完成回访任务组件 | manual | 0.2d | 2018-01-17 08:00 | 2018-01-17 09:36 | 刘露露 | 1.6h |
| 151 | 1.4.3.8.2.2 | 3.8.2.2已完成任务组件 | manual | 0.2d | 2018-01-17 08:00 | 2018-01-17 09:36 | 刘露露 | 1.6h |
| 152 | 1.4.3.8.2.3 | 3.8.2.3个人今日情况组件 | manual | 0.1d | 2018-01-17 08:00 | 2018-01-17 08:48 | 刘露露 | 0.8h |

| ID | WBS | Task | Type | Duration | Start | Finish | Total slack | Resources | Work |
| --- | --- | --- | --- | --- | --- | --- | --- | --- | --- |
| 153 | 1.4.3.9 | **3.3.9 预约回电测试** |  | 1d | 2018-01-18 08:00 | 2018-01-18 17:00 |  |  | 17.6h |
| 154 | 1.4.3.9.1 | 3.3.9.1 预约回电外呼流程 | manual | 0.2d | 2018-01-18 08:00 | 2018-01-18 09:36 |  | 刘露露; 汪金平 | 3.2h |
| 155 | 1.4.3.9.2 | **3.3.9.2预约回电名单普通控制** |  | 0.2d | 2018-01-18 08:00 | 2018-01-18 09:36 |  |  | 3.2h |
| 156 | 1.4.3.9.2.1 | 3.3.9.2.1预约回电定时、手工启停功能 | manual | 0.2d | 2018-01-18 08:00 | 2018-01-18 09:36 |  | 刘露露; 汪金平 | 3.2h |
| 157 | 1.4.3.9.3 | **3.3.9.3客户呼入后自动完成其外呼任务** |  | 0.4d | 2018-01-18 08:00 | 2018-01-18 11:12 |  |  | 3.2h |
| 158 | 1.4.3.9.3.1 | 3.3.9.3.1 三次回电失败取消任务 | manual | 0.1d | 2018-01-18 08:00 | 2018-01-18 08:48 |  | 刘露露; 汪金平 | 1.6h |
| 159 | 1.4.3.9.3.2 | 3.3.9.3.2短信通知客户预约回电情况 | manual | 0.1d | 2018-01-18 08:00 | 2018-01-18 08:48 |  | 刘露露; 汪金平 | 1.6h |
| 160 | 1.4.3.9.4 | 3.3.9.3.2 预约回电名单新增接口 | manual | 0.1d | 2018-01-18 08:00 | 2018-01-18 08:48 |  | 刘露露; 汪金平 | 1.6h |
| 161 | 1.4.3.9.5 | 3.3.9.3.3 预约回电名单查询 | manual | 0.1d | 2018-01-18 08:00 | 2018-01-18 08:48 |  | 汪金平; 刘露露 | 1.6h |
| 162 | 1.4.3.9.6 | 3.3.9.4 预约回电弹屏 | manual | 0.3d | 2018-01-18 08:00 | 2018-01-18 10:24 |  |  |  |
| 163 | 1.4.3.9.7 | **3.3.9.4.1 客户上次接入IVR操作轨迹展示** |  | 0.1d | 2018-01-18 08:00 | 2018-01-18 08:48 |  | 汪金平; 刘露露 | 4.8h |
| 164 | 1.4.3.9.7.1 | 3.3.9.4.2用户信息增加预约回电标识 | manual | 0.1d | 2018-01-18 08:00 | 2018-01-18 08:48 |  | 汪金平; 刘露露 | 1.6h |
| 165 | 1.4.3.9.7.2 | 3.3.9.4.3 预约回电任务状态登记 | manual | 0.1d | 2018-01-18 08:00 | 2018-01-18 08:48 |  | 汪金平; 刘露露 | 1.6h |
| 166 | 1.4.3.10 | **3.3.10 监控+报表测试** |  | 2.12d | 2018-01-18 08:00 | 2018-01-19 18:00 |  |  | 3.2h |
| 167 | 1.4.3.10.1 | 3.3.10.1坐席状态监控预警显示 | manual | 0.2d | 2018-01-18 08:00 | 2018-01-18 09:36 |  | 刘露露; 汪金平 | 3.2h |
| 168 | 1.4.4 | 3.4 测试报告 | manual | 1d | 2018-01-19 09:00 | 2018-01-19 18:00 |  | 叶珍珍; 刘露露; 李信龙 | 24h |
| 169 | 1.5 | **4. UAT阶段** |  | 8.88d | 2018-01-22 09:00 | 2018-02-01 18:00 | 0d |  | 176h |
| 170 | 1.5.1 | 4.1 测试执行 | manual | 5d | 2018-01-22 09:00 | 2018-01-26 18:00 |  | 叶珍珍; 刘露露; 李信龙 | 120h |
| 171 | 1.5.2 | 4.2 测试报告 | manual | 1d | 2018-01-26 09:00 | 2018-01-26 18:00 |  | 叶珍珍; 刘露露; 李信龙 | 24h |
| 172 | 1.5.3 | **5. 上线** |  | 3.88d | 2018-01-29 09:00 | 2018-02-01 18:00 | 0d |  | 32h |
| 173 | 1.5.3.1 | 环境准备及检查 | manual | 1d | 2018-01-29 09:00 | 2018-01-29 18:00 |  | 黄建 | 8h |
| 174 | 1.5.3.2 | 系统组件安装 | manual | 3d | 2018-01-30 09:00 | 2018-02-01 18:00 |  | 黄建 | 24h |
